# PMO

Schedule from MS Project, 2012-08-20 to 2013-05-14, status date 2008-02-01, A marks actual dates.
Accenture

## Calendars

- Padrão: Mon-Fri 09:00-12:00, 13:00-18:00; Sat-Sun off. Exceptions (off unless hours are given): 2012-10-12, 2012-11-02, 2012-11-15 to 2012-11-16, 2012-12-23 to 2012-12-25, 2012-12-31 to 2013-01-01, 2013-01-20, 2013-02-08 to 2013-02-13 (Carnaval 2013), 2013-04-21, 2013-04-23, 2013-05-01.

## Resources

| Resource |
| --- |
| Especialista ETL2 SP |
| Usuário |
| Especialista ETL1 SP |
| Gerente de Serviços |
| Especialista ETL 1 |
| Especialista Front End 1 |
| Modelador Lógico |
| Usuários, Especialista ETL 1 |
| Especialista ETL 2 |
| Líder de Projeto |
| Sylvio Pereira |
| Rafael Chaves |
| Vanessa Felix |
| Felipe Cabral |
| Letícia Paranhos |
| Leonardo Carneiro |
| Waldemar |
| Sustentação ETL |
| Especialista Funcional SIA |
| Especialista SAP |
| Marcos Sales |
| Marcio Ramos |
| Frederico Santos |
| Felipe |
| Andre Vendrel |
| Anderson |
| Gísela |
| Nadir |
| Especialista ADP |
| Especialista ETL3 SP |
| Mirian |
| Fabricio |
| <Novo Recurso1> |
| <Novo Recurso2> |
| Márcio Rezende |
| Juliano Danches |
| Felipe Cabral |

## Schedule

| ID | WBS | Task | Duration | Start | Finish | Predecessors | Complete | Remaining | Baseline 1 start | Baseline 1 finish | Total slack | Free slack | Constraint | Resources | Work | Actual work | Text7 | Text15 | Text16 |
| --- | --- | --- | --- | --- | --- | --- | --- | --- | --- | --- | --- | --- | --- | --- | --- | --- | --- | --- | --- |
| 1 | 1 | **Projeto[1] - BI Custo de pessoal** | 178d | 2012-08-20 A | 2013-05-14 |  | 12% | 156.62d | 2012-08-20 | 2013-05-14 | 0d |  |  | Anderson | 4015.92h | 417.5h | NOK | 53 % | 450.13 |
| 2 | 1.1 | **Fase[1] - Planejamento** | 1d | 2012-08-20 A | 2012-08-21 A |  | 100% |  | 2012-08-20 | 2012-08-21 |  |  |  |  | 22h | 22h |  |  |  |
| 3 | 1.1.1 | **Etapa[1] - Preparação Inicial** | 1d | 2012-08-20 A | 2012-08-21 A |  | 100% |  | 2012-08-20 | 2012-08-21 |  |  |  |  | 22h | 22h |  |  |  |
| 4 | 1.1.1.1 | **Produto[1] - Atividades de Levantamento Planejadas** | 0.88d | 2012-08-20 A | 2012-08-20 A |  | 100% |  | 2012-08-20 | 2012-08-20 |  |  |  |  | 7h | 7h |  |  |  |
| 5 | 1.1.1.1.1 | Planejar levantamentos | 0.88d | 2012-08-20 A | 2012-08-20 A |  | 100% |  | 2012-08-20 | 2012-08-20 |  |  |  | Gerente de Serviços | 7h | 7h |  |  |  |
| 6 | 1.1.1.2 | **Produto[2] - Cronograma de trabalho validado** | 0.88d | 2012-08-20 A | 2012-08-20 A |  | 100% |  | 2012-08-20 | 2012-08-20 |  |  |  |  | 7h | 7h |  |  |  |
| 7 | 1.1.1.2.1 | Validar cronograma | 0.88d | 2012-08-20 A | 2012-08-20 A |  | 100% |  | 2012-08-20 | 2012-08-20 |  |  |  | Gerente de Serviços | 7h | 7h |  |  |  |
| 8 | 1.1.1.3 | **Produto[3] - Reunião de kickoff do projeto realizada** | 1d | 2012-08-20 A | 2012-08-21 A |  | 100% |  | 2012-08-20 | 2012-08-21 |  |  |  |  | 8h | 8h |  |  |  |
| 9 | 1.1.1.3.1 | Realizar reunião de kickoff | 1d | 2012-08-20 A | 2012-08-21 A |  | 100% |  | 2012-08-20 | 2012-08-21 |  |  |  | Gerente de Serviços | 8h | 8h |  |  |  |
| 10 | 1.2 | **Fase[2] - Macro Desenho** | 68d | 2012-08-24 A | 2012-12-03 |  | 45% | 37.4d | 2012-08-24 | 2012-11-26 | 106d | 0d |  |  | 590.3h | 214.7h |  |  |  |
| 11 | 1.2.1 | **Etapa[1] - Especificação funcional** | 68d | 2012-08-24 A | 2012-12-03 |  | 43% | 38.91d | 2012-08-24 | 2012-11-26 | 106d |  |  |  | 390.2h | 136.2h |  |  |  |
| 12 | 1.2.1.1 | **Produto[1] - Especificação funcional ambiente de ETL finalizada** | 61d | 2012-08-24 A | 2012-11-22 |  | 78% | 13.34d | 2012-08-24 | 2012-11-23 | 113d |  |  |  | 134.2h | 82.2h |  |  |  |
| 13 | 1.2.1.1.1 | Realizar análise de entrega de relatórios por fase | 1d | 2012-08-24 A | 2012-08-27 A | 9 | 100% |  | 2012-08-24 | 2012-08-27 |  |  | finish no earlier than 2012-08-24 | Especialista ETL 1 | 8h | 8h |  |  |  |
| 14 | 1.2.1.1.2 | Realizar análise do indicador x decomposição das métricas | 2d | 2012-08-24 A | 2012-08-27 A | 9 | 100% |  | 2012-08-24 | 2012-08-27 |  |  | finish no earlier than 2012-08-27 | Especialista ETL 1 | 14.2h | 14.2h |  |  |  |
| 15 | 1.2.1.1.3 | Realizar análise da decomposição das métricas x sistemas fonte | 1d | 2012-08-29 A | 2012-08-30 A | 9 | 100% |  | 2012-08-29 | 2012-08-30 |  |  | finish no earlier than 2012-08-29 | Especialista ETL 1 | 8h | 8h |  |  |  |
| 16 | 1.2.1.1.4 | Realizar análise de dimensões x sistemas fonte | 3d | 2012-08-29 A | 2012-08-31 A | 9 | 100% |  | 2012-08-29 | 2012-08-31 |  |  | finish no earlier than 2012-08-31 | Especialista ETL 1 | 24h | 24h |  |  |  |
| 17 | 1.2.1.1.5 | Validar especificação funcional ambiente de ETL | 5d | 2012-11-09 A | 2012-11-19 A | 16FS+47d | 100% |  | 2012-11-09 | 2012-11-19 |  |  |  | Sustentação ETL [20%]; Especialista Funcional SIA [20%]; Especialista SAP [20%] | 24h | 24h |  |  |  |
| 18 | 1.2.1.1.6 | Ajustar especificação Funcional ambiente ETL | 1d | 2012-11-20 A | 2012-11-20 | 17 | 50% | 0.5d | 2012-11-20 | 2012-11-20 | 115d |  |  | Rafael Chaves | 8h | 4h |  |  |  |
| 19 | 1.2.1.1.7 | Elaborar plano de teste processos de integração | 3d | 2012-11-20 | 2012-11-22 | 17 |  |  | 2012-11-20 | 2012-11-23 | 113d |  |  | Felipe Cabral; Vanessa Felix | 48h |  |  |  |  |
| 20 | 1.2.1.2 | **Produto[2] - Especificação Funcional Camada de Consumo finalizada** | 57d | 2012-09-10 A | 2012-12-03 |  | 23% | 43.73d | 2012-09-10 | 2012-11-26 | 106d |  |  |  | 256h | 54h |  |  |  |
| 21 | 1.2.1.2.1 | Elaborar especificação funcional da camada de consumo | 3d | 2012-09-10 A | 2012-09-13 A | 16 | 100% |  | 2012-09-10 | 2012-09-13 |  |  |  | Especialista Front End 1 | 24h | 24h |  |  |  |
| 22 | 1.2.1.2.2 | Complementar especificação funcional | 15d | 2012-10-30 A | 2012-11-22 | 21FS+32d | 25% | 11.25d | 2012-10-30 | 2012-11-13 | 106d | 0d |  | Letícia Paranhos | 120h | 30h |  |  |  |
| 23 | 1.2.1.2.3 | Pré-validação GP | 1d | 2012-11-23 | 2012-11-23 | 22 |  |  | 2012-11-14 | 2012-11-14 | 106d | 0d |  | Líder de Projeto | 8h |  |  |  |  |
| 24 | 1.2.1.2.4 | Validar especificação funcional Camada de Consumo | 5d | 2012-11-26 | 2012-11-30 | 23 |  |  | 2012-11-19 | 2012-11-23 | 106d | 0d |  | Marcos Sales [20%]; Marcio Ramos [20%]; Frederico Santos [20%]; Felipe [20%]; Andre Vendrel [20%]; Anderson [20%]; Gísela [20%] | 56h |  |  |  |  |
| 25 | 1.2.1.2.5 | Ajustar especificação Funcional camada de consumo | 1d | 2012-12-03 | 2012-12-03 | 24 |  |  | 2012-11-26 | 2012-11-26 | 106d | 0d |  | Letícia Paranhos; Rafael Chaves | 16h |  |  |  |  |
| 26 | 1.2.1.2.6 | Elaborar Plano de teste camada de consumo | 4d | 2012-11-28 | 2012-12-03 | 25FF |  |  | 2012-11-21 | 2012-11-26 | 106d |  |  | Letícia Paranhos | 32h |  |  |  |  |

Notes:
- 1: Premissas para o replanejamento: / # inclusão de stage no modelo da interface SIA-ADP / # Unificação das informações de Interface SIA-ADP as fases de construção do ODS
- 17: Encaminhar documento < nome do documento >
- 24: apresentar à Gísela no dia 14 antes do envio formal

| ID | WBS | Task | Type | Duration | Start | Finish | Predecessors | Complete | Remaining | Baseline 1 start | Baseline 1 finish | Total slack | Free slack | Constraint | Resources | Work | Actual work |
| --- | --- | --- | --- | --- | --- | --- | --- | --- | --- | --- | --- | --- | --- | --- | --- | --- | --- |
| 27 | 1.2.2 | **Etapa[2] - Modelagem de Dados** |  | 15d | 2012-11-01 A | 2012-11-26 |  | 33% | 10d | 2012-11-01 | 2012-11-21 | 111d |  |  |  | 161.6h | 40h |
| 28 | 1.2.2.1 | **Produto[1] - Modelo de dados conceitual elaborado** |  | 15d | 2012-11-01 A | 2012-11-26 |  | 33% | 10d | 2012-11-01 | 2012-11-21 | 111d |  |  |  | 161.6h | 40h |
| 29 | 1.2.2.1.1 | Elaborar modelo de dados conceitual |  | 5d | 2012-11-01 A | 2012-11-08 A |  | 100% |  | 2012-11-01 | 2012-11-08 |  |  | finish no earlier than 2012-11-08 | Sylvio Pereira | 40h | 40h |
| 30 | 1.2.2.1.2 | Validar Modelo de dados conceitual |  | 8d | 2012-11-09 | 2012-11-22 | 17SS |  |  | 2012-11-09 | 2012-11-19 | 111d | 0d |  | Marcos Sales [20%]; Marcio Ramos [20%]; Frederico Santos [20%]; Felipe [20%]; Andre Vendrel [20%]; Anderson [20%]; Gísela [20%]; Nadir [20%]; Sustentação ETL [20%] | 115.2h |  |
| 31 | 1.2.2.1.3 | Ajustar Modelo conceitual de dados |  | 2d | 2012-11-23 | 2012-11-26 | 30 |  |  | 2012-11-20 | 2012-11-21 | 111d |  |  | Sylvio Pereira [40%] | 6.4h |  |
| 32 | 1.2.3 | **Etapa[3] - Arquitetura** |  | 5d | 2012-08-27 A | 2012-09-03 A |  | 100% |  | 2012-08-27 | 2012-09-03 |  |  |  |  | 38.5h | 38.5h |
| 33 | 1.2.3.1 | **Produto[1] - Arquitetura de referência e ambiente de desenvolvimento preparados** |  | 5d | 2012-08-27 A | 2012-09-03 A |  | 100% |  | 2012-08-27 | 2012-09-03 |  |  |  |  | 38.5h | 38.5h |
| 34 | 1.2.3.1.1 | Realizar estudo / detalhamento da arquitetura de referência |  | 2d | 2012-08-27 A | 2012-08-29 A |  | 100% |  | 2012-08-27 | 2012-08-29 |  |  | finish no earlier than 2012-08-28 | Gerente de Serviços | 14.5h | 14.5h |
| 35 | 1.2.3.1.2 | Preparar ambiente de desenvolvimento |  | 3d | 2012-08-29 A | 2012-08-31 A |  | 100% |  | 2012-08-29 | 2012-08-31 |  |  | finish no earlier than 2012-08-31 | Especialista ETL 1 | 24h | 24h |
| 36 | 1.2.3.1.3 | M1: Macro Desenho Finalizado | milestone | 0d | 2012-09-03 A | 2012-09-03 A | 35FF | 100% |  | 2012-09-03 | 2012-09-03 |  |  |  |  |  |  |
| 37 | 1.3 | **Fase[3] - Interface SIA-ADP + ETLs Frentes Horista / Mensalista / Alunos Enturmados** |  | 114d | 2012-09-26 A | 2013-03-20 |  | 9% | 103.79d | 2012-08-20 | 2013-03-12 | 37d |  |  |  | 2075.62h | 180.8h |
| 38 | 1.3.1 | **Etapa[1] - Interface SIA-ADP** |  | 82d | 2012-09-26 A | 2013-01-29 |  | 15% | 69.64d | 2012-08-20 | 2012-12-17 | 69d | 0d |  |  | 1504.42h | 180.8h |
| 39 | 1.3.1.1 | **Produto[1] - Especificação funcional interface SIA-ADP finalizada** |  | 35d | 2012-09-26 A | 2012-11-19 A |  | 100% |  | 2012-09-26 | 2012-11-21 |  |  |  |  | 140.8h | 140.8h |
| 40 | 1.3.1.1.1 | Levantar funcionalmente a Interface SIA-ADP |  | 3d | 2012-09-26 A | 2012-10-01 A |  | 100% |  | 2012-09-26 | 2012-10-01 |  |  | finish no earlier than 2012-09-28 | Especialista ETL 1 | 24h | 24h |
| 41 | 1.3.1.1.2 | Elaborar primeira versão da EF |  | 2d | 2012-09-26 A | 2012-09-28 A |  | 100% |  | 2012-09-26 | 2012-09-28 |  |  | finish no earlier than 2012-09-28 | Especialista ETL 1 | 16h | 16h |
| 42 | 1.3.1.1.3 | Realizar Comparações regras x código |  | 3d | 2012-09-26 A | 2012-10-01 A |  | 100% |  | 2012-09-26 | 2012-10-01 |  |  | finish no earlier than 2012-09-28 | Especialista ETL 1 | 24h | 24h |
| 43 | 1.3.1.1.4 | Realizar Mapeamento das Origens |  | 1d | 2012-09-26 A | 2012-09-27 A |  | 100% |  | 2012-09-26 | 2012-09-27 |  |  | start no earlier than 2012-09-26 | Especialista ETL 1 | 8h | 8h |
| 44 | 1.3.1.1.5 | Complementar EF |  | 1d | 2012-09-26 A | 2012-09-27 A |  | 100% |  | 2012-09-26 | 2012-09-27 |  |  | start no earlier than 2012-09-26 | Especialista ETL 1 | 8h | 8h |
| 45 | 1.3.1.1.6 | Realizar Reunião de Validação de regras de negócio |  | 3d | 2012-09-26 A | 2012-10-01 A |  | 100% |  | 2012-09-26 | 2012-10-01 |  |  | start no earlier than 2012-09-26 | Usuários, Especialista ETL 1 | 24h | 24h |
| 46 | 1.3.1.1.7 | Validar EF Interface SIA-ADP |  | 4d | 2012-11-09 A | 2012-11-14 A | 30SS | 100% |  | 2012-11-09 | 2012-11-19 |  |  |  | Sustentação ETL [30%]; Especialista Funcional SIA [30%]; Especialista ADP [30%] | 28.8h | 28.8h |
| 47 | 1.3.1.1.8 | Ajustar EF Interface SIA-ADP |  | 1d | 2012-11-19 A | 2012-11-19 A | 46 | 100% |  | 2012-11-20 | 2012-11-21 |  |  |  | Vanessa Felix | 8h | 8h |
| 48 | 1.3.1.2 | **Produto[2] - Especificação técnica interface SIA-ADP finalizada** |  | 30d | 2012-11-19 A | 2013-01-03 |  | 8% | 27.5d | 2012-08-20 | 2012-11-30 | 40d | 0d |  |  | 370.8h | 40h |
| 49 | 1.3.1.2.1 | Elaborar especificação técnica interface SIA-ADP |  | 5d | 2012-11-19 A | 2012-11-23 | 47SS | 50% | 2.5d | 2012-10-30 | 2012-10-31 | 37d | 0d |  | Vanessa Felix; Felipe Cabral | 80h | 40h |
| 50 | 1.3.1.2.2 | Validar especificação técnica SIA-ADP |  | 2d | 2012-11-26 | 2012-11-27 | 49 |  |  | 2012-11-21 | 2012-11-28 | 37d | 0d |  | Sustentação ETL [30%]; Márcio Rezende | 20.8h |  |
| 51 | 1.3.1.2.3 | Ajustar especificação técnica SIA-ADP |  | 2d | 2012-11-28 | 2012-11-29 | 50 |  |  | 2012-11-28 | 2012-11-30 | 37d | 0d |  | Felipe Cabral; Vanessa Felix; Líder de Projeto | 48h |  |
| 52 | 1.3.1.2.4 | Elaborar Especificação técnica ETL 1 (legado -> stage) |  | 1d | 2012-11-30 | 2012-11-30 | 51 |  |  | 2012-12-04 | 2012-12-04 | 60d |  |  | Vanessa Felix | 8h |  |
| 53 | 1.3.1.2.5 | Elaborar especificação técnica ETL 2 (stage -> ODS) |  | 5d | 2012-11-30 | 2012-12-07 | 51 |  |  | 2012-11-27 | 2012-11-30 | 40d | 0d |  | Felipe Cabral | 40h |  |
| 54 | 1.3.1.2.6 | Validar especificação técnica do ETL 2 (stage -> ODS) |  | 3d | 2012-12-10 | 2012-12-12 | 53 |  |  | 2012-12-03 | 2012-12-07 | 40d | 0d |  | Vanessa Felix | 24h |  |
| 55 | 1.3.1.2.7 | Ajustar especificação técnica do ETL 2 (stage -> ODS) |  | 2d | 2012-12-13 | 2012-12-14 | 54 |  |  | 2012-12-10 | 2012-12-18 | 40d | 0d |  | Vanessa Felix | 16h |  |
| 56 | 1.3.1.2.8 | Elaborar especificação técnica ETL 3 (ODS -> DW) |  | 4d | 2012-12-17 | 2012-12-20 | 55 |  |  | 2012-12-17 | 2013-01-03 | 40d | 0d |  | Rafael Chaves | 32h |  |
| 57 | 1.3.1.2.9 | Validar especificação técnica do ETL 3 (ODS -> DW) |  | 5d | 2012-12-21 | 2013-01-02 | 56 |  |  | 2013-01-16 | 2013-01-23 | 40d | 0d |  | Sustentação ETL; Fabricio | 80h |  |
| 58 | 1.3.1.2.10 | Ajustar Especificação técnica ETL 3 (ODS -> DW) |  | 1d | 2013-01-03 | 2013-01-03 | 57 |  |  | 2013-01-23 | 2013-01-24 | 40d |  |  | Felipe Cabral; Líder de Projeto; Vanessa Felix | 22h |  |

Notes:
- 29: Verificar quando será finalizado e ajustar o cronograma.
- 32: Não foram incluídas etapas de ajuste
- 46: Validação será efetuada sobre a nova documentação da interface produzida a partir inclusão do cenário da interface SIA-ADP produzindo visão Horista Consolidada a partir da base ODS
- 57: Verificar disponibilidade do Fabricio durante o recesso.

| ID | WBS | Task | Type | Duration | Start | Finish | Predecessors | Baseline 1 start | Baseline 1 finish | Total slack | Free slack | Resources | Work |
| --- | --- | --- | --- | --- | --- | --- | --- | --- | --- | --- | --- | --- | --- |
| 59 | 1.3.1.3 | **Produto[3] - ETL Horista desenvolvida** |  | 25d | 2012-11-30 | 2013-01-09 |  | 2012-11-09 | 2012-11-29 | 69d |  |  | 752h |
| 60 | 1.3.1.3.1 | Desenvolver ETL 1 (Legado -> Stage) |  | 2d | 2012-11-30 | 2012-12-03 | 51 | 2012-12-05 | 2012-12-11 | 69d | 0d | Especialista ETL1 SP; Especialista ETL2 SP | 32h |
| 61 | 1.3.1.3.2 | Desenvolver ETL 2 (stage -> ODS) |  | 9d | 2012-12-17 | 2013-01-02 | 55 | 2012-12-11 | 2012-12-19 | 88d |  | Especialista ETL1 SP; Vanessa Felix | 144h |
| 62 | 1.3.1.3.3 | Atuação variável - simples |  | 2d | 2012-12-17 | 2012-12-18 | 55 | 2012-08-20 | 2012-08-20 | 89d | 0d | Felipe Cabral | 16h |
| 63 | 1.3.1.3.4 | Retroativo calendário - simples |  | 2d | 2012-12-17 | 2012-12-18 | 55 | 2012-08-20 | 2012-08-20 | 88d | 0d | Vanessa Felix | 16h |
| 64 | 1.3.1.3.5 | Atuação fixa - simples |  | 2d | 2012-12-17 | 2012-12-18 | 55 | 2012-08-20 | 2012-08-20 | 87d | 0d | Rafael Chaves | 16h |
| 65 | 1.3.1.3.6 | Retroativo turma On Line - simples |  | 2d | 2012-12-19 | 2012-12-20 | 62 | 2012-08-20 | 2012-08-20 | 89d | 0d | Felipe Cabral | 16h |
| 66 | 1.3.1.3.7 | Obter verba RH - simples |  | 2d | 2012-12-19 | 2012-12-20 | 63 | 2012-08-20 | 2012-08-20 | 88d | 0d | Vanessa Felix | 16h |
| 67 | 1.3.1.3.8 | Turma On Line - média |  | 2d | 2012-12-19 | 2012-12-20 | 64 | 2012-08-20 | 2012-08-20 | 87d | 0d | Rafael Chaves | 16h |
| 68 | 1.3.1.3.9 | Especialização - média |  | 2d | 2012-12-21 | 2012-12-26 | 65 | 2012-08-20 | 2012-08-21 | 89d | 0d | Felipe Cabral | 16h |
| 69 | 1.3.1.3.10 | Faltas - média |  | 2d | 2012-12-21 | 2012-12-26 | 66 | 2012-08-20 | 2012-08-21 | 88d | 0d | Vanessa Felix | 16h |
| 70 | 1.3.1.3.11 | Fechamento mensal - complexa |  | 3d | 2012-12-21 | 2012-12-27 | 67 | 2012-08-20 | 2012-08-21 | 87d | 0d | Rafael Chaves | 24h |
| 71 | 1.3.1.3.12 | Obter centro de resultado - média |  | 2d | 2012-12-27 | 2012-12-28 | 68 | 2012-08-20 | 2012-08-21 | 89d |  | Felipe Cabral | 16h |
| 72 | 1.3.1.3.13 | Retroativo alocação - complexa |  | 3d | 2012-12-27 | 2013-01-02 | 69 | 2012-08-20 | 2012-08-21 | 88d |  | Vanessa Felix | 24h |
| 73 | 1.3.1.3.14 | Alocação - complexa |  | 3d | 2012-12-28 | 2013-01-03 | 70 | 2012-08-20 | 2012-08-21 | 87d |  | Rafael Chaves | 24h |
| 74 | 1.3.1.3.15 | Desenvolver ETL 3 (ODS -> DW) |  | 5d | 2012-12-21 | 2013-01-02 | 56 | 2012-12-14 | 2012-12-18 | 61d | 24d | Letícia Paranhos | 40h |
| 75 | 1.3.1.3.16 | Executar Testes unitários ETL e SIA-ADP |  | 20d | 2012-12-04 | 2013-01-04 | 60SS+2d | 2012-11-22 | 2012-11-29 | 69d | 0d | Vanessa Felix; Especialista ETL3 SP | 320h |
| 76 | 1.3.1.3.17 | Teste integrado camadas ETL (stage + ODS + SIA-ADP + DW) |  | 3d | 2013-01-07 | 2013-01-09 | 75 |  |  | 83d |  |  |  |
| 77 | 1.3.1.4 | **Produto[4] - ETL Horista testada e homologada** |  | 37d | 2012-11-30 | 2013-01-25 |  | 2012-11-19 | 2012-12-13 | 71d |  |  | 216.82h |
| 78 | 1.3.1.4.1 | Elaborar plano de testes |  | 5d | 2012-11-30 | 2012-12-06 | 51 | 2012-11-19 | 2012-11-21 | 103d |  | Fabricio [20%]; Anderson [20%]; Felipe Cabral; Vanessa Felix; Waldemar; Líder de Projeto | 66.42h |
| 79 | 1.3.1.4.2 | Testar, ajustar e documentar evidencias de teste da interface SIA-ADP (integração e Homologação) |  | 7d | 2013-01-07 | 2013-01-15 | 75 | 2012-11-21 | 2012-12-04 | 69d | 0d | Felipe Cabral; Vanessa Felix | 112h |
| 80 | 1.3.1.4.3 | Validar interface SIA-ADP e ETL |  | 8d | 2013-01-16 | 2013-01-25 | 79 | 2012-12-04 | 2012-12-13 | 69d | 0d | Fabricio [30%]; Anderson [30%] | 38.4h |
| 81 | 1.3.1.5 | **Produto[5] - ETL Horista - passagem para produção** |  | 2d | 2013-01-25 | 2013-01-29 |  | 2012-12-13 | 2012-12-17 | 69d |  |  | 24h |
| 82 | 1.3.1.5.1 | Planejar Cutover |  | 1d | 2013-01-25 | 2013-01-28 | 80 | 2012-12-13 | 2012-12-14 | 69d | 0d | Felipe Cabral; Vanessa Felix; Líder de Projeto | 16h |
| 83 | 1.3.1.5.2 | Encaminhar interface SIA-ADP para produção - Deployment |  | 1d | 2013-01-29 | 2013-01-29 | 82 | 2012-12-14 | 2012-12-17 | 69d | 0d | Felipe Cabral | 8h |
| 84 | 1.3.1.5.3 | M2: Go Live - Interface SIA - ADP | milestone | 0d | 2013-01-29 | 2013-01-29 | 83FF | 2012-12-17 | 2012-12-17 | 69d |  |  |  |

Notes:
- 59: Elaborar materiais de suporte não foi previsto na proposta original de trabalho. / Confirmar se realmente é necessário. Se for teremos que incluir a atividade.
- 60: A atividade ja foi iniciada. Algumas tabelas stage já estão com o desenvolvimento adiantado. / Mapear as tabelas faltantes e o complemento de atividades necessário. / percentual de conclusão ???
- 75: teste integrado em paralelo com desenvolvimento para reduzir entrega SIA-ADP
- 78: Falta apartar quem define os critérios de aceite / TI - Marcelo / Negócio ?
- 79: Tem participação das equipes da Estácio ?
- 83: Ericsson - TI Produção / Carlos - TI
- 84: Qual é a premissa neste deployment ? / A interface atual e a nova rodarão em paralelo ?

| ID | WBS | Task | Duration | Start | Finish | Predecessors | Baseline 1 start | Baseline 1 finish | Total slack | Free slack | Resources | Work |
| --- | --- | --- | --- | --- | --- | --- | --- | --- | --- | --- | --- | --- |
| 85 | 1.3.2 | **Etapa[2] - Desenho Frente Horista / Mensalista / Alunos enturmados** | 24d | 2012-11-30 | 2013-01-08 |  | 2012-10-25 | 2013-01-24 | 37d |  |  | 183.2h |
| 86 | 1.3.2.1 | **Produto[1] - Macro Desenho - modelo de dados e mapeamento finalizados** | 4d | 2012-11-30 | 2012-12-05 |  | 2012-10-25 | 2012-11-28 | 37d |  |  | 40h |
| 87 | 1.3.2.1.1 | Elaborar o modelo da camada ODS / Relacional | 1d | 2012-11-30 | 2012-11-30 | 51 | 2012-10-25 | 2012-11-09 | 37d | 0d | Sylvio Pereira | 8h |
| 88 | 1.3.2.1.2 | Elaborar o modelo da camada DW / Dimensional | 1d | 2012-12-03 | 2012-12-03 | 87 | 2012-11-12 | 2012-11-19 | 37d | 0d | Sylvio Pereira | 8h |
| 89 | 1.3.2.1.3 | Validar o modelo final e obter aprovação | 2d | 2012-12-04 | 2012-12-05 | 88 | 2012-11-20 | 2012-11-26 | 104d |  | Marcos Sales [20%]; Marcio Ramos [20%]; Sustentação ETL [20%]; Sylvio Pereira [20%]; Mirian [20%] | 16h |
| 90 | 1.3.2.1.4 | Ajustar o modelo final e obter aprovação | 1d | 2012-12-04 | 2012-12-04 | 88 | 2012-11-27 | 2012-11-28 | 37d | 0d | Sylvio Pereira | 8h |
| 91 | 1.3.2.2 | **Produto[2] - Desenho técnico - modelagem física concluída** | 7d | 2012-12-05 | 2012-12-13 |  | 2012-11-20 | 2012-12-04 | 37d |  |  | 47.2h |
| 92 | 1.3.2.2.1 | Efetuar definição do modelo físico (ODS / Relacional / DW / Dimensional) | 2d | 2012-12-05 | 2012-12-06 | 90 | 2012-11-20 | 2012-11-22 | 103d |  | Sylvio Pereira [40%] | 6.4h |
| 93 | 1.3.2.2.2 | Documentar o modelo fisico | 1d | 2012-12-05 | 2012-12-05 | 90 | 2012-11-23 | 2012-11-26 | 37d | 0d | Sylvio Pereira [30%] | 2.4h |
| 94 | 1.3.2.2.3 | Construir scripts para criação do modelo físico | 1d | 2012-12-06 | 2012-12-06 | 93 | 2012-11-26 | 2012-11-26 | 37d | 0d | Sylvio Pereira [20%] | 1.6h |
| 95 | 1.3.2.2.4 | Elaborar especificação de segurança | 2d | 2012-12-07 | 2012-12-10 | 94 | 2012-11-23 | 2012-11-26 | 37d | 0d | Sylvio Pereira [30%] | 4.8h |
| 96 | 1.3.2.2.5 | Validar o modelo fisico e obter aprovação | 2d | 2012-12-11 | 2012-12-12 | 95 | 2012-11-27 | 2012-12-03 | 37d | 0d | Juliano Danches | 16h |
| 97 | 1.3.2.2.6 | Ajustar o modelo fisico e obter aprovação | 1d | 2012-12-13 | 2012-12-13 | 96 | 2012-12-04 | 2012-12-04 | 37d | 0d | Líder de Projeto; Sylvio Pereira | 16h |
| 98 | 1.3.2.3 | **Produto[3] - Desenho técnico - especificação técnica da camada de consumo concluída** | 14d | 2012-12-14 | 2013-01-08 |  | 2012-11-27 | 2012-12-21 | 37d |  |  | 96h |
| 99 | 1.3.2.3.1 | Elaborar especificação técnica da camada de consumo | 4d | 2012-12-14 | 2012-12-19 | 97 | 2012-11-27 | 2012-11-30 | 37d | 0d | Letícia Paranhos | 32h |
| 100 | 1.3.2.3.2 | Elaborar especificação de segurança | 4d | 2012-12-20 | 2012-12-27 | 99 | 2012-12-05 | 2012-12-10 | 37d | 0d | Sylvio Pereira | 32h |
| 101 | 1.3.2.3.3 | Elaborar plano de testes da camada de consumo | 2d | 2012-12-20 | 2012-12-21 | 99 | 2012-12-11 | 2012-12-12 | 92d |  | Letícia Paranhos | 16h |
| 102 | 1.3.2.3.4 | Validar a especificação técnica da camada de consumo | 5d | 2012-12-28 | 2013-01-07 | 100 | 2012-12-13 | 2012-12-19 | 37d | 0d |  |  |
| 103 | 1.3.2.3.5 | Ajustar especificação técnica da camada de consumo | 1d | 2013-01-08 | 2013-01-08 | 102 | 2012-12-20 | 2012-12-21 | 37d | 0d | Letícia Paranhos; Líder de Projeto | 16h |
| 104 | 1.3.3 | **Etapa[3] - Construção Frente Horista / Mensalista / Alunos enturmados** | 20d | 2013-01-09 | 2013-02-05 |  | 2012-11-27 | 2013-01-30 | 37d |  |  | 136h |
| 105 | 1.3.3.1 | **Produto[1] - Camada de consumo - Camada semântica desenvolvida** | 11d | 2013-01-09 | 2013-01-23 |  | 2013-01-16 | 2013-01-30 | 37d |  |  | 80h |
| 106 | 1.3.3.1.1 | Desenvolver e testar os objetos da camada de consumo | 4d | 2013-01-09 | 2013-01-14 | 103 | 2013-01-16 | 2013-01-21 | 37d | 0d | Letícia Paranhos | 32h |
| 107 | 1.3.3.1.2 | Validar os objetos da camada de consumo | 5d | 2013-01-15 | 2013-01-21 | 106 | 2013-01-22 | 2013-01-28 | 37d | 0d |  |  |
| 108 | 1.3.3.1.3 | Ajustar objetos da camada de consumo | 2d | 2013-01-22 | 2013-01-23 | 107 | 2013-01-29 | 2013-01-30 | 37d | 0d | Letícia Paranhos; Líder de Projeto; Sylvio Pereira | 48h |

Notes:
- 87: Verificar na modelagem o arquivo TXT de origem ADP (previsto anteriormente na frente mensalista)
- 89: avaliar consolidar com a mensalista
- 107: avaliar unir horista + mensalista + gerencial

| ID | WBS | Task | Duration | Start | Finish | Predecessors | Baseline 1 start | Baseline 1 finish | Total slack | Free slack | Resources | Work |
| --- | --- | --- | --- | --- | --- | --- | --- | --- | --- | --- | --- | --- |
| 109 | 1.3.3.2 | **Produto[2] - Camada de consumo - Camada de consumo desenvolvida** | 9d | 2013-01-24 | 2013-02-05 |  | 2012-12-03 | 2012-12-19 | 37d |  |  | 56h |
| 110 | 1.3.3.2.1 | Definir e planejar os treinamentos da camada de consumo | 2d | 2013-01-24 | 2013-01-25 | 108 | 2012-12-03 | 2012-12-04 | 71d |  | Letícia Paranhos | 16h |
| 111 | 1.3.3.2.2 | Validar o material de treinamento | 3d | 2013-01-24 | 2013-01-28 | 108 | 2012-12-05 | 2012-12-07 | 70d |  |  |  |
| 112 | 1.3.3.2.3 | Ajustar material de treinamento | 1d | 2013-01-24 | 2013-01-24 | 108 | 2012-12-10 | 2012-12-10 | 37d | 0d | Letícia Paranhos; Líder de Projeto | 16h |
| 113 | 1.3.3.2.4 | Validar processos de suporte e camada de consumo | 3d | 2013-01-25 | 2013-01-29 | 112 | 2012-12-14 | 2012-12-18 | 69d |  |  |  |
| 114 | 1.3.3.2.5 | Ajustar processos de suporte e camada de consumo | 1d | 2013-01-25 | 2013-01-25 | 112 | 2012-12-19 | 2012-12-19 | 37d | 0d | Letícia Paranhos; Líder de Projeto; Sylvio Pereira | 24h |
| 115 | 1.3.3.2.6 | Definir os mecanismos e processos de suporte aos usuários camada de consumo | 2d | 2013-01-28 | 2013-01-29 | 114 |  |  | 37d | 0d |  |  |
| 116 | 1.3.3.2.7 | Ministrar treinamento camada de consumo | 5d | 2013-01-30 | 2013-02-05 | 115 | 2012-12-11 | 2012-12-17 | 37d | 0d |  |  |
| 117 | 1.3.4 | **Etapa[4] - Testes e Homologação Frente Horista / Mensalista / Alunos enturmados** | 27d | 2013-02-06 | 2013-03-20 |  | 2013-01-11 | 2013-03-08 | 37d |  |  | 188h |
| 118 | 1.3.4.1 | **Produto[1] - Testes integrados - camada de consumo finalizados** | 8d | 2013-02-06 | 2013-02-21 |  | 2013-01-31 | 2013-02-15 | 37d |  |  | 48h |
| 119 | 1.3.4.1.1 | Executar testes integrados da camada de consumo | 3d | 2013-02-06 | 2013-02-14 | 74, 116 | 2013-01-31 | 2013-02-04 | 37d | 0d | Sylvio Pereira | 48h |
| 120 | 1.3.4.1.2 | Validar testes camada de consumo | 5d | 2013-02-15 | 2013-02-21 | 119 | 2013-02-05 | 2013-02-15 | 37d | 0d |  |  |
| 121 | 1.3.4.2 | **Produto[2] - Ambiente de homologação preparado** | 6d | 2013-02-22 | 2013-03-01 |  | 2013-02-18 | 2013-02-25 | 37d |  |  | 40h |
| 122 | 1.3.4.2.1 | Efetuar setup do ambiente de homologação | 2d | 2013-02-22 | 2013-02-25 | 120 | 2013-02-18 | 2013-02-19 | 37d | 0d | Rafael Chaves | 16h |
| 123 | 1.3.4.2.2 | Carregar dados e execução do ETL em Ambiente de Homologação | 3d | 2013-02-26 | 2013-02-28 | 122 | 2013-02-20 | 2013-02-22 | 37d | 0d | Vanessa Felix | 24h |
| 124 | 1.3.4.2.3 | Verificar preparação do ambiente | 1d | 2013-03-01 | 2013-03-01 | 123 | 2013-02-25 | 2013-02-25 | 37d | 0d |  |  |
| 125 | 1.3.4.3 | **Produto[3] - Testes de stress e aceitação - Camada de Consumoe** | 3d | 2013-03-04 | 2013-03-06 |  | 2013-02-26 | 2013-03-01 | 37d | 0d |  | 44h |
| 126 | 1.3.4.3.1 | Revisar plano de testes | 1d | 2013-03-04 | 2013-03-04 | 124 | 2013-02-26 | 2013-02-27 | 37d | 0d |  |  |
| 127 | 1.3.4.3.2 | Executar testes de stress e aceitação - Camada de Consumo | 2d | 2013-03-05 | 2013-03-06 | 126 | 2013-02-28 | 2013-03-01 | 37d | 0d | Rafael Chaves; Vanessa Felix; Felipe Cabral | 44h |
| 128 | 1.3.4.4 | **Produto[4] - Desenho técnico - plano de inicialização e operação da solução concluídos** | 10d | 2013-03-07 | 2013-03-20 |  | 2012-12-03 | 2012-12-19 | 37d |  |  | 56h |
| 129 | 1.3.4.4.1 | Definir e planejar os treinamentos da camada de consumo | 2d | 2013-03-07 | 2013-03-08 | 127 | 2012-12-03 | 2012-12-04 | 37d | 0d | Letícia Paranhos | 16h |
| 130 | 1.3.4.4.2 | Validar o material de treinamento | 3d | 2013-03-11 | 2013-03-13 | 129 | 2012-12-05 | 2012-12-07 | 42d |  |  |  |
| 131 | 1.3.4.4.3 | Ajustar material de treinamento | 1d | 2013-03-11 | 2013-03-11 | 129 | 2012-12-10 | 2012-12-10 | 37d | 0d | Letícia Paranhos; Líder de Projeto | 16h |
| 132 | 1.3.4.4.4 | Validar processos de suporte e camada de consumo | 2d | 2013-03-12 | 2013-03-13 | 131 | 2012-12-14 | 2012-12-18 | 42d |  |  |  |
| 133 | 1.3.4.4.5 | Ajustar processos de suporte e camada de consumo | 1d | 2013-03-12 | 2013-03-12 | 131 | 2012-12-19 | 2012-12-19 | 37d | 0d | Letícia Paranhos; Líder de Projeto; Sylvio Pereira | 24h |
| 134 | 1.3.4.4.6 | Definir os mecanismos e processos de suporte aos usuários camada de consumo | 1d | 2013-03-13 | 2013-03-13 | 133 |  |  | 37d | 0d |  |  |
| 135 | 1.3.4.4.7 | Ministrar treinamento camada de consumo | 5d | 2013-03-14 | 2013-03-20 | 134 | 2012-12-11 | 2012-12-17 | 37d |  |  |  |

Notes:
- 110: Montagem de material simples sobre os artefatos construídos pelo projeto, considerando que os usuários já são treinados na ferramenta. / Existem artefatos construídos pelo projeto com informações apropriadas para a camada de consumo ?
- 116: em 22/10: Treinamento dos artefatos desenvolvidos durante o projeto. Rever as datas de treinamento de acordo com a disponibilidade de infra, consultoria e Estácio
- 120: Atenção com o Carnaval!!!!
- 124: dados carregados
- 129: Montagem de material simples sobre os artefatos construídos pelo projeto, considerando que os usuários já são treinados na ferramenta. / Existem artefatos construídos pelo projeto com informações apropriadas para a camada de consumo ?
- 135: em 22/10: Treinamento dos artefatos desenvolvidos durante o projeto. Rever as datas de treinamento de acordo com a disponibilidade de infra, consultoria e Estácio

| ID | WBS | Task | Type | Duration | Start | Finish | Predecessors | Baseline 1 start | Baseline 1 finish | Total slack | Free slack | Resources | Work |
| --- | --- | --- | --- | --- | --- | --- | --- | --- | --- | --- | --- | --- | --- |
| 136 | 1.3.5 | **Etapa[5] - Implantação Frente Horista / Mensalista / Alunos enturmados** |  | 2d | 2013-03-07 | 2013-03-08 |  | 2013-03-01 | 2013-03-12 | 42d |  |  | 64h |
| 137 | 1.3.5.1 | **Produto[1] - Camada de consumo encaminhada para produção** |  | 2d | 2013-03-07 | 2013-03-08 |  | 2013-03-08 | 2013-03-12 | 42d | 0d |  | 64h |
| 138 | 1.3.5.1.1 | Encaminhar camada de consumo para produção |  | 2d | 2013-03-07 | 2013-03-08 | 125 | 2013-03-08 | 2013-03-12 | 42d | 0d | Letícia Paranhos; Sylvio Pereira | 48h |
| 139 | 1.3.5.1.2 | M3: Go Live - Horistas |  | 1d | 2013-03-08 | 2013-03-08 | 138FF | 2013-03-11 | 2013-03-12 | 45d |  | Letícia Paranhos; Sylvio Pereira | 16h |
| 140 | 1.4 | **Fase[4] - Frente Gerencial** |  | 138d | 2012-08-20 | 2013-03-15 |  | 2012-08-20 | 2013-03-15 | 40d |  |  | 720h |
| 141 | 1.4.1 | **Etapa[1] - Desenho** |  | 30d | 2013-01-04 | 2013-02-20 |  | 2012-12-11 | 2013-01-28 | 40d |  |  | 320h |
| 142 | 1.4.1.1 | **Produto[1] - Macro desenho - Modelo de dados e mapeamento finalizados** |  | 13d | 2013-01-04 | 2013-01-22 | 48 | 2012-12-11 | 2013-01-02 | 40d |  |  | 176h |
| 143 | 1.4.1.1.1 | Analisar sistema origem SAP - 8 tabelas e PGERAL - Planilha |  | 5d | 2013-01-04 | 2013-01-10 | 95, 100 | 2012-12-11 | 2012-12-17 | 78d | 0d | Sylvio Pereira | 40h |
| 144 | 1.4.1.1.2 | Analisar sistema origem ADP |  | 4d | 2013-01-11 | 2013-01-16 | 143 | 2012-12-18 | 2012-12-21 | 78d |  | Sylvio Pereira | 32h |
| 145 | 1.4.1.1.3 | Elaborar e Analisar o modelo da camada ODS / Relacional |  | 4d | 2013-01-04 | 2013-01-09 | 95, 100 | 2012-12-11 | 2012-12-14 | 40d | 0d | Sylvio Pereira | 32h |
| 146 | 1.4.1.1.4 | Elaborar e Analisar o modelo da camada DW / Dimensional |  | 4d | 2013-01-10 | 2013-01-15 | 145 | 2012-12-17 | 2012-12-20 | 40d | 0d | Sylvio Pereira | 32h |
| 147 | 1.4.1.1.5 | Apresentar o modelo final e obter aprovação |  | 5d | 2013-01-16 | 2013-01-22 | 146 | 2012-12-21 | 2013-01-02 | 40d | 0d | Sylvio Pereira | 40h |
| 148 | 1.4.1.2 | **Produto[2] - Desenho técnico - modelagem física concluída** |  | 10d | 2013-01-23 | 2013-02-05 |  | 2013-01-03 | 2013-01-16 | 40d | 0d |  | 40h |
| 149 | 1.4.1.2.1 | Efetuar definição do modelo físico (ODS / DW) |  | 2d | 2013-01-23 | 2013-01-24 | 147 | 2013-01-03 | 2013-01-04 | 40d | 0d | Sylvio Pereira | 16h |
| 150 | 1.4.1.2.2 | Documentar o modelo fisico |  | 1d | 2013-01-25 | 2013-01-25 | 149 | 2013-01-07 | 2013-01-07 | 40d | 0d | Sylvio Pereira | 8h |
| 151 | 1.4.1.2.3 | Construir scripts para criação do modelo físico |  | 1d | 2013-01-28 | 2013-01-28 | 150 | 2013-01-08 | 2013-01-08 | 40d | 0d | Letícia Paranhos | 8h |
| 152 | 1.4.1.2.4 | Elaborar especificações de segurança |  | 1d | 2013-01-29 | 2013-01-29 | 151 | 2013-01-09 | 2013-01-09 | 40d | 0d | Letícia Paranhos | 8h |
| 153 | 1.4.1.2.5 | Validar modelagem física e obter aprovação |  | 5d | 2013-01-30 | 2013-02-05 | 149, 150, 151, 152 | 2013-01-10 | 2013-01-16 | 40d |  |  |  |
| 154 | 1.4.1.3 | **Produto[3] - Desenho técnico - Especificação técnica do ETL concluída** |  | 7d | 2013-02-06 | 2013-02-20 |  | 2013-01-03 | 2013-01-14 | 40d |  |  | 56h |
| 155 | 1.4.1.3.1 | Elaborar especificação técnica ETL 1 |  | 2d | 2013-02-06 | 2013-02-07 | 148 | 2013-01-03 | 2013-01-07 | 40d | 0d | Felipe Cabral | 16h |
| 156 | 1.4.1.3.2 | Elaborar especificação técnica ETL 2 |  | 2d | 2013-02-14 | 2013-02-15 | 155 | 2013-01-07 | 2013-01-09 | 40d | 0d | Felipe Cabral | 16h |
| 157 | 1.4.1.3.3 | Elaborar especificação técnica ETL 3 |  | 3d | 2013-02-18 | 2013-02-20 | 156 | 2013-01-09 | 2013-01-14 | 40d | 0d | Felipe Cabral | 24h |
| 158 | 1.4.1.3.4 | Elaborar Plano de testes do ETL | milestone | 0d | 2013-02-20 | 2013-02-20 | 157 | 2013-01-08 | 2013-01-08 | 41d | 0d |  |  |
| 159 | 1.4.1.4 | **Produto[4] - Desenho técnico - Especificação Técnica da camada de consumo concluída** |  | 11d | 2013-01-30 | 2013-02-19 |  | 2013-01-14 | 2013-01-28 | 54d |  |  | 48h |
| 160 | 1.4.1.4.1 | Elaborar especificação técnica da camada de consumo |  | 4d | 2013-01-30 | 2013-02-04 | 152 | 2013-01-14 | 2013-01-17 | 54d | 0d | Letícia Paranhos | 32h |
| 161 | 1.4.1.4.2 | Elaborar do plano de testes da camada de consumo |  | 2d | 2013-02-05 | 2013-02-06 | 160 | 2013-01-18 | 2013-01-21 | 58d | 0d | Letícia Paranhos | 16h |
| 162 | 1.4.1.4.3 | Apresentar a especiicação técnica e obter aprovação |  | 5d | 2013-02-05 | 2013-02-15 | 160 | 2013-01-18 | 2013-01-24 | 60d |  |  |  |
| 163 | 1.4.1.4.4 | Apresentar plano de testes e obter aprovação |  | 5d | 2013-02-07 | 2013-02-19 | 161 | 2013-01-22 | 2013-01-28 | 58d |  |  |  |

Notes:
- 140: Faltam informações sobre o detalhamento do escopo da frente gerencial para definir o esforço necessário
- 155: Neste caso podem ocorrer alterações pois teremos outras origens. Atividade mantida.

| ID | WBS | Task | Duration | Start | Finish | Predecessors | Baseline 1 start | Baseline 1 finish | Total slack | Free slack | Resources | Work |
| --- | --- | --- | --- | --- | --- | --- | --- | --- | --- | --- | --- | --- |
| 164 | 1.4.2 | **Etapa[2] - Construção** | 136d | 2012-08-20 | 2013-03-13 |  | 2013-01-11 | 2013-03-15 | 42d |  |  | 272h |
| 165 | 1.4.2.1 | **Produto[1] - ETL - Repositório de dados construído** | 2d | 2013-02-06 | 2013-02-07 |  | 2013-01-11 | 2013-01-14 | 45d |  |  | 16h |
| 166 | 1.4.2.1.1 | Construir repositório de dados ETL | 2d | 2013-02-06 | 2013-02-07 | 148 | 2013-01-11 | 2013-01-14 | 45d | 0d | Rafael Chaves | 16h |
| 167 | 1.4.2.2 | **Produto[2] - Processos ETL desenvolvidos** | 124d | 2012-08-20 | 2013-02-25 |  | 2013-01-14 | 2013-01-25 | 40d | 0d |  | 168h |
| 168 | 1.4.2.2.1 | Desenvolver ETL 1 | 3d | 2013-02-14 | 2013-02-18 | 155, 166 | 2013-01-15 | 2013-01-17 | 45d |  | Especialista ETL1 SP | 24h |
| 169 | 1.4.2.2.2 | Desenvolver ETL 2 | 3d | 2013-02-18 | 2013-02-20 | 156 | 2013-01-18 | 2013-01-22 | 43d |  | Especialista ETL2 SP | 24h |
| 170 | 1.4.2.2.3 | Desenvolver ETL 3 | 3d | 2013-02-21 | 2013-02-25 | 157 | 2013-01-23 | 2013-01-25 | 40d |  | Especialista ETL1 SP | 24h |
| 171 | 1.4.2.2.4 | Elaborar os materiais de suporte | 2d | 2013-02-21 | 2013-02-22 | 158 | 2013-01-15 | 2013-01-16 | 41d |  | Felipe Cabral | 16h |
| 172 | 1.4.2.2.5 | Executar testes unitários de ETL | 10d | 2012-08-20 | 2012-08-31 |  | 2013-01-14 | 2013-01-25 | 154d |  | Rafael Chaves | 80h |
| 173 | 1.4.2.3 | **Produto[3] - Camada de Consumo - Camada semântica desenvolvida** | 5d | 2013-02-05 | 2013-02-15 |  | 2013-01-21 | 2013-01-25 | 54d |  |  | 40h |
| 174 | 1.4.2.3.1 | Desenvolver camada semântica | 5d | 2013-02-05 | 2013-02-15 | 160 | 2013-01-21 | 2013-01-25 | 54d | 0d | Sylvio Pereira | 40h |
| 175 | 1.4.2.4 | **Produto[4] - Camada de consumo - Camada de consumo desenvolvida** | 18d | 2013-02-18 | 2013-03-13 |  | 2013-01-28 | 2013-03-15 | 42d |  |  | 48h |
| 176 | 1.4.2.4.1 | Desenvolver objetos da camada de consumo | 3d | 2013-02-18 | 2013-02-20 | 174 | 2013-01-28 | 2013-01-30 | 54d | 12d | Letícia Paranhos | 24h |
| 177 | 1.4.2.4.2 | Testar unitariamente objetos da camada de consumo | 3d | 2013-03-11 | 2013-03-13 | 176, 138 | 2013-03-12 | 2013-03-15 | 42d |  | Sylvio Pereira | 24h |
| 178 | 1.4.3 | **Etapa[3] - Testes e Homologação** | 11d | 2013-02-26 | 2013-03-12 |  | 2012-08-20 | 2013-02-18 | 40d |  |  | 96h |
| 179 | 1.4.3.1 | **Produto[1] - Testes Integrados ETL finalizados** | 2d | 2013-02-26 | 2013-02-27 |  | 2013-01-28 | 2013-01-29 | 40d | 2d |  | 16h |
| 180 | 1.4.3.1.1 | Executar testes integrados ETL | 2d | 2013-02-26 | 2013-02-27 | 167 | 2013-01-28 | 2013-01-29 | 40d | 0d | Felipe Cabral | 16h |
| 181 | 1.4.3.2 | **Produto[2] - Testes Integrados Camada de consumo finalizados** | 2d | 2013-02-28 | 2013-03-01 |  | 2013-01-31 | 2013-02-01 | 40d |  |  | 16h |
| 182 | 1.4.3.2.1 | Executar testes Integrados da camada de consumo | 2d | 2013-02-28 | 2013-03-01 | 180 | 2013-01-31 | 2013-02-01 | 40d | 0d | Letícia Paranhos | 16h |
| 183 | 1.4.3.3 | **Produto[3] - Ambiente de homologação preparado** | 3d | 2013-03-04 | 2013-03-06 |  | 2013-02-04 | 2013-02-06 | 40d | 0d |  | 24h |
| 184 | 1.4.3.3.1 | Efetuar setup do ambiente de homologação | 1d | 2013-03-04 | 2013-03-04 | 179, 182 | 2013-02-04 | 2013-02-04 | 40d | 0d | Rafael Chaves | 8h |
| 185 | 1.4.3.3.2 | Carregar dados e executar ETL em Ambiente de Homologação | 2d | 2013-03-05 | 2013-03-06 | 184 | 2013-02-05 | 2013-02-06 | 40d | 0d | Rafael Chaves | 16h |
| 186 | 1.4.3.4 | **Produto[4] - Testes de stress e aceitação ETL finalizados** | 3d | 2013-03-07 | 2013-03-11 |  | 2013-02-07 | 2013-02-18 | 40d |  |  | 16h |
| 187 | 1.4.3.4.1 | Rever plano de testes | 1d | 2013-03-07 | 2013-03-07 | 185 | 2013-02-07 | 2013-02-14 | 40d | 0d |  |  |
| 188 | 1.4.3.4.2 | Executar testes de stress e aceitação - camada de ETL | 2d | 2013-03-08 | 2013-03-11 | 187 | 2013-02-15 | 2013-02-18 | 40d | 0d | Rafael Chaves | 16h |

| ID | WBS | Task | Duration | Start | Finish | Predecessors | Baseline 1 start | Baseline 1 finish | Total slack | Free slack | Constraint | Resources | Work |
| --- | --- | --- | --- | --- | --- | --- | --- | --- | --- | --- | --- | --- | --- |
| 189 | 1.4.3.5 | **Produto[5] - Testes de stress e aceitação da camada de consumo finalizados** | 4d | 2013-03-07 | 2013-03-12 |  | 2012-08-20 | 2013-02-15 | 41d |  |  |  | 24h |
| 190 | 1.4.3.5.1 | Rever plano de testes | 1d | 2013-03-07 | 2013-03-07 | 182, 183 | 2012-08-20 | 2012-08-21 | 41d | 0d |  |  |  |
| 191 | 1.4.3.5.2 | Executar testes de stress e aceitação - camada de consumo | 3d | 2013-03-08 | 2013-03-12 | 190 | 2013-02-07 | 2013-02-15 | 41d | 1d |  | Letícia Paranhos | 24h |
| 192 | 1.4.4 | **Etapa[4] - Implantação** | 4d | 2013-03-12 | 2013-03-15 |  | 2013-02-19 | 2013-02-22 | 40d |  |  |  | 32h |
| 193 | 1.4.4.1 | **Produto[1] - Ambiente ETL encaminhado para produção** | 2d | 2013-03-12 | 2013-03-13 |  | 2013-02-19 | 2013-02-20 | 40d | 0d |  |  | 16h |
| 194 | 1.4.4.1.1 | Encaminhar para produção ambiente de ETL | 2d | 2013-03-12 | 2013-03-13 | 188 | 2013-02-19 | 2013-02-20 | 40d | 0d |  | Rafael Chaves | 16h |
| 195 | 1.4.4.2 | **Produto[2] - Camada de consumo encaminhada para produção** | 2d | 2013-03-14 | 2013-03-15 |  | 2013-02-21 | 2013-02-22 | 40d | 0d |  |  | 16h |
| 196 | 1.4.4.2.1 | Encaminhar camada de consumo para produção | 2d | 2013-03-14 | 2013-03-15 | 194, 191 | 2013-02-21 | 2013-02-22 | 40d | 0d |  | Letícia Paranhos | 16h |
| 197 | 1.4.4.2.2 | M4: Go Live - Mensalista e Gerencial | 1d | 2013-03-15 | 2013-03-15 | 196FF | 2013-02-22 | 2013-02-22 | 40d |  |  |  |  |
| 198 | 1.5 | **Fase[6] - Operação Assistida** | 38d | 2013-03-20 | 2013-05-14 |  | 2013-03-20 | 2013-05-14 | 0d |  |  |  | 608h |
| 199 | 1.5.1 | **Etapa[1] - Operação assistida do ambiente** | 38d | 2013-03-20 | 2013-05-14 |  | 2013-03-20 | 2013-05-14 | 0d |  |  |  | 608h |
| 200 | 1.5.1.1 | **Produto[1] - Relatório de issues e atendimentos elaborado** | 33d | 2013-03-20 | 2013-05-07 |  | 2013-03-20 | 2013-05-07 | 0d |  |  |  | 528h |
| 201 | 1.5.1.1.1 | Acompanhar ambiente pós produção - Semana 1 | 4d | 2013-03-20 | 2013-03-25 |  | 2013-03-20 | 2013-03-25 | 0d |  | start no earlier than 2013-03-20 | Líder de Projeto; Especialista ETL 2 | 64h |
| 202 | 1.5.1.1.2 | Elaborar relatório de Issue e Atendimentos - Semana 1 | 1d | 2013-03-26 | 2013-03-26 | 201 | 2013-03-26 | 2013-03-26 | 0d |  |  | Líder de Projeto; Especialista ETL 2 | 16h |
| 203 | 1.5.1.1.3 | Acompanhar ambiente pós produção - Semana 2 | 4d | 2013-03-27 | 2013-04-01 | 202 | 2013-03-27 | 2013-04-01 | 0d |  |  | Líder de Projeto; Especialista ETL 2 | 64h |
| 204 | 1.5.1.1.4 | Elaborar relatório de Issue e Atendimentos - Semana 2 | 1d | 2013-04-02 | 2013-04-02 | 203 | 2013-04-02 | 2013-04-02 | 0d |  |  | Líder de Projeto; Especialista ETL 2 | 16h |
| 205 | 1.5.1.1.5 | Acompanhar ambiente pós produção - Semana 3 | 4d | 2013-04-03 | 2013-04-08 | 204 | 2013-04-03 | 2013-04-08 | 0d |  |  | Líder de Projeto; Especialista ETL 2 | 64h |
| 206 | 1.5.1.1.6 | Elaborar relatório de Issue e Atendimentos - Semana 3 | 1d | 2013-04-09 | 2013-04-09 | 205 | 2013-04-09 | 2013-04-09 | 0d |  |  | Líder de Projeto; Especialista ETL 2 | 16h |
| 207 | 1.5.1.1.7 | Acompanhar ambiente pós produção - Semana 4 | 4d | 2013-04-10 | 2013-04-15 | 206 | 2013-04-10 | 2013-04-15 | 0d |  |  | Líder de Projeto; Especialista ETL 2 | 64h |
| 208 | 1.5.1.1.8 | Elaborar relatório de Issue e Atendimentos - Semana 4 | 1d | 2013-04-16 | 2013-04-16 | 207 | 2013-04-16 | 2013-04-16 | 0d |  |  | Líder de Projeto; Especialista ETL 2 | 16h |
| 209 | 1.5.1.1.9 | Acompanhar ambiente pós produção - Semana 5 | 4d | 2013-04-17 | 2013-04-22 | 208 | 2013-04-17 | 2013-04-22 | 0d |  |  | Líder de Projeto; Especialista ETL 2 | 64h |
| 210 | 1.5.1.1.10 | Elaborar relatório de Issue e Atendimentos - Semana 5 | 1d | 2013-04-24 | 2013-04-24 | 209 | 2013-04-24 | 2013-04-24 | 0d |  |  | Líder de Projeto; Especialista ETL 2 | 16h |
| 211 | 1.5.1.1.11 | Acompanhar ambiente pós produção - Semana 6 | 4d | 2013-04-25 | 2013-04-30 | 210 | 2013-04-25 | 2013-04-30 | 0d |  |  | Líder de Projeto; Especialista ETL 2 | 64h |
| 212 | 1.5.1.1.12 | Elaborar relatório de Issue e Atendimentos - Semana 6 | 1d | 2013-05-02 | 2013-05-02 | 211 | 2013-05-02 | 2013-05-02 | 0d |  |  | Líder de Projeto; Especialista ETL 2 | 16h |
| 213 | 1.5.1.1.13 | Acompanhar ambiente pós produção - Semana 7 | 2d | 2013-05-03 | 2013-05-06 | 212 | 2013-05-03 | 2013-05-06 | 0d |  |  | Líder de Projeto; Especialista ETL 2 | 32h |
| 214 | 1.5.1.1.14 | Elaborar relatório de Issue e Atendimentos - Semana 7 | 1d | 2013-05-07 | 2013-05-07 | 213 | 2013-05-07 | 2013-05-07 | 0d |  |  | Líder de Projeto; Especialista ETL 2 | 16h |

| ID | WBS | Task | Duration | Start | Finish | Predecessors | Complete | Remaining | Baseline 1 start | Baseline 1 finish | Total slack | Resources | Work |
| --- | --- | --- | --- | --- | --- | --- | --- | --- | --- | --- | --- | --- | --- |
| 215 | 1.5.1.2 | **Produto[2] - Relatório final elaborado** | 5d | 2013-05-08 | 2013-05-14 |  |  |  | 2013-05-08 | 2013-05-14 | 0d |  | 80h |
| 216 | 1.5.1.2.1 | Acompanhar ambiente pós produção - Semana 8 | 4d | 2013-05-08 | 2013-05-13 | 214 |  |  | 2013-05-08 | 2013-05-13 | 0d | Líder de Projeto; Especialista ETL 2 | 64h |
| 217 | 1.5.1.2.2 | Elaborar relatório de Issue e Atendimentos - Semana 8 | 1d | 2013-05-14 | 2013-05-14 | 216 |  |  | 2013-05-14 | 2013-05-14 | 0d | Líder de Projeto; Especialista ETL 2 | 16h |
| 220 | 1.6 | Gate[1] - Início do Projeto | 1d | 2012-08-20 A | 2012-08-20 A | 2SS | 100% |  | 2012-08-20 | 2012-08-20 |  |  |  |
| 221 | 1.7 | Gate[2] - Planejamento concluído | 1d | 2012-08-24 A | 2012-08-24 | 2FF | 50% | 0.5d | 2012-08-24 | 2012-08-24 | 173d |  |  |
| 222 | 1.8 | Gate[3] - Macro Desenho concluído | 1d | 2012-09-25 A | 2012-12-03 | 10FF | 50% | 0.5d | 2012-09-25 | 2012-11-26 | 106d |  |  |
| 223 | 1.9 | Gate[4] - Frente Horista - Inteface SIA-ADP finalizada | 1d | 2012-12-07 A | 2013-01-29 | 38FF | 25% | 0.75d | 2012-12-07 | 2012-12-17 | 69d |  |  |
| 224 | 1.10 | Gate[5] - Frente Horista - ETL em Produção | 1d | 2012-08-20 | 2012-08-20 |  |  |  | 2013-03-05 | 2013-03-06 | 177d |  |  |
| 225 | 1.11 | Gate[6] - Frente Horista - Camada de Consumo finalizada | 1d | 2013-03-08 | 2013-03-08 | 137FF |  |  | 2013-03-11 | 2013-03-12 | 45d |  |  |
| 226 | 1.12 | Gate[7] - Gerencial Mensalista - ETL em Produção | 1d | 2013-03-13 | 2013-03-13 | 193FF |  |  | 2013-02-20 | 2013-02-20 | 42d |  |  |
| 227 | 1.13 | Gate[8] - Gerencial Mensalista - Camada de Consumo concluído | 1d | 2013-03-15 | 2013-03-15 | 195FF |  |  | 2013-02-22 | 2013-02-22 | 40d |  |  |
| 228 | 1.14 | Gate[9] - Alunos - ETL em Produção | 1d | 2012-08-20 | 2012-08-20 |  |  |  | 2013-03-20 | 2013-03-20 | 177d |  |  |
| 229 | 1.15 | Gate[10] - Alunos - Camada de Consumo concluído | 1d | 2012-08-20 | 2012-08-20 |  |  |  | 2013-03-20 | 2013-03-20 | 177d |  |  |
| 230 | 1.16 | Gate[11] - Liberação para Homologação | 1d | 2012-08-20 | 2012-08-20 |  |  |  | 2013-03-11 | 2013-03-11 | 177d |  |  |
| 231 | 1.17 | Gate[12] - Go Live | 1d | 2012-08-20 | 2012-08-20 |  |  |  | 2013-03-20 | 2013-03-20 | 177d |  |  |
| 232 | 1.18 | Gate[13] - Operação Assistida | 1d | 2013-05-14 | 2013-05-14 | 198FF |  |  | 2013-05-14 | 2013-05-14 | 0d |  |  |
